# roadmap

How a schedule from MS Project changed from version to version. A marks actual dates.

## Version 1 (saved 2007-06-09)

Note of the change: - Roadmap angepasst - Präsentation erweitert

| ID | WBS | Task | Duration | Start | Finish | Predecessors | Total float | Constraint |
| --- | --- | --- | --- | --- | --- | --- | --- | --- |
| 1 | 1 | **Vorarbeiten** | 26d | 2007-05-14 | 2007-06-18 |  | 80d |  |
| 2 |  | Abgabe Draft Version Disposition | 0d | 2007-06-11 | 2007-06-11 |  | 90d | finish no earlier than 2007-06-11 |
| 3 |  | Disposition erstellen | 21d | 2007-05-14 | 2007-06-11 |  | 88d | start no earlier than 2007-05-14 |
| 4 |  | Präsentation erstellen | 2d | 2007-06-14 | 2007-06-15 | 3 | 81d | finish no earlier than 2007-06-15 |
| 5 |  | Präsentation Disposition | 0d | 2007-06-16 | 2007-06-16 |  | 85d | finish no earlier than 2007-06-16 |
| 6 |  | Abgabe Masterarbeitsblatt | 0d | 2007-06-18 | 2007-06-18 |  | 85d | start no earlier than 2007-06-18 |
| 7 | 2 | **Masterarbeit** | 80d | 2007-06-25 | 2007-10-13 | 1 | 0d |  |
| 8 |  | Beginn Masterarbeit | 0d | 2007-06-25 | 2007-06-25 |  | 75d | start no earlier than 2007-06-25 |
| 9 |  | Erarbeiten des Fragenkatalogs | 5d | 2007-06-25 | 2007-06-29 | 8 | 75d |  |
| 10 |  | Erarbeiten der Einladung an der Umfrage | 1d | 2007-06-25 | 2007-06-25 | 8 | 79d |  |
| 11 |  | Start der Umfrage | 0d | 2007-07-09 | 2007-07-09 |  | 70d | start no earlier than 2007-07-09 |
| 12 |  | Abgabe Masterarbeit | 0d | 2007-10-13 | 2007-10-13 |  | 0d | start no earlier than 2007-10-13 |
| 13 |  | Kapitel 1 | 0d | 2007-08-06 | 2007-08-06 |  | 50d | start no earlier than 2007-08-06 |
| 14 |  | Kapitel 2 | 0d | 2007-08-20 | 2007-08-20 |  | 40d | start no earlier than 2007-08-20 |
| 15 |  | Kapitel 3 | 0d | 2007-09-03 | 2007-09-03 |  | 30d | start no earlier than 2007-09-03 |

## Version 2 (saved 2007-06-24)

Note of the change: de mäse macht au wieder mit :)

Last finish 2007-10-13 → 2007-10-05 (-8d).

Added:

| ID | Task | Duration | Start | Finish | Predecessors | Constraint |
| --- | --- | --- | --- | --- | --- | --- |
| 3 | Organisieren der Literatur | 5d | 2007-06-25 | 2007-06-29 |  |  |
| 5 | Erarbeiten Fragenkatalog | 10d | 2007-07-16 | 2007-07-27 | 4 | as late as possible |
| 15 | Kapitel 4 | 5d | 2007-09-24 | 2007-09-28 | 14 |  |
| 16 | Kapitel 5 | 5d | 2007-10-01 | 2007-10-05 | 15 |  |

Removed: 2 Abgabe Draft Version Disposition; 8 Beginn Masterarbeit; 10 Erarbeiten der Einladung an der Umfrage

Changed:

| ID | Task | Start | Finish | Duration | Total float | Predecessors | Other |
| --- | --- | --- | --- | --- | --- | --- | --- |
| 1 | **Masterstudy** | 2007-06-18 → 2007-06-25 (+7d) | 2007-06-18 → 2007-10-05 (+109d) | 0d → 75d | 85d → 0d |  | was named Abgabe Masterarbeitsblatt; constraint start no earlier than 2007-06-18 → none |
| 2 | **Vorarbeiten** | 2007-05-14 → 2007-06-25 (+42d) | 2007-06-18 → 2007-07-27 (+39d) | 26d → 25d | 80d → 0d |  |  |
| 4 | Literaturstudium | 2007-10-13 → 2007-07-02 (-103d) | 2007-10-13 → 2007-07-13 (-92d) | 0d → 10d |  | none → 3 | was named Abgabe Masterarbeit; constraint start no earlier than 2007-10-13 → as late as possible |
| 6 | Setup Survey Applikation | 2007-06-14 → 2007-07-16 (+32d) | 2007-06-15 → 2007-07-17 (+32d) |  | 81d → 8d | 7 → 4 | was named Präsentation erstellen; constraint finish no earlier than 2007-06-15 → none |
| 7 | Erarbeiten der Einladungsschreiben | 2007-05-14 → 2007-07-11 (+58d) | 2007-06-11 → 2007-07-12 (+31d) | 21d → 2d | 88d → 6d |  | was named Disposition erstellen; constraint start no earlier than 2007-05-14 → start no earlier than 2007-07-11 |
| 8 | **Umfrage** | 2007-06-16 → 2007-07-30 (+44d) | 2007-06-16 → 2007-08-31 (+76d) | 0d → 25d | 85d → 0d | none → 2 | was named Präsentation Disposition; constraint finish no earlier than 2007-06-16 → none |
| 9 | Start der Umfrage | 2007-07-09 → 2007-07-30 (+21d) | 2007-07-09 → 2007-08-24 (+46d) | 0d → 20d | 70d → 0d |  | constraint start no earlier than 2007-07-09 → none |
| 10 | Auswertung der Umfrage | 2007-06-25 → 2007-08-27 (+63d) | 2007-10-13 → 2007-08-31 (-43d) | 80d → 5d |  | 2 → 9 | was named Masterarbeit |
| 11 | **Umsetzung** | 2007-06-25 → 2007-09-03 (+70d) | 2007-06-29 → 2007-10-05 (+98d) | 5d → 25d | 75d → 0d | Beginn Masterarbeit → 8 | was named Erarbeiten des Fragenkatalogs |
| 12 | Kapitel 1 | 2007-08-06 → 2007-09-03 (+28d) | 2007-08-06 → 2007-09-07 (+32d) | 0d → 5d | 50d → 0d |  | constraint start no earlier than 2007-08-06 → none |
| 13 | Kapitel 2 | 2007-08-20 → 2007-09-10 (+21d) | 2007-08-20 → 2007-09-14 (+25d) | 0d → 5d | 40d → 0d | none → 12 | constraint start no earlier than 2007-08-20 → none |
| 14 | Kapitel 3 | 2007-09-03 → 2007-09-17 (+14d) | 2007-09-03 → 2007-09-21 (+18d) | 0d → 5d | 30d → 0d | none → 13 | constraint start no earlier than 2007-09-03 → none |

## Version 3 (saved 2007-08-05)

Note of the change: Roadmap den aktuellen Gegebenheiten angepasst. Literaturverzeichnis erweitert

Last finish 2007-10-05 → 2007-10-12 (+7d). Complete tasks 0 → 4.

Added:

| ID | Task | Duration | Start | Finish | Predecessors | Constraint |
| --- | --- | --- | --- | --- | --- | --- |
| 4 | Webrecherche | 2d | 2007-06-25 A | 2007-06-26 A |  |  |
| 5 | Zentralbibliothek | 2d | 2007-06-27 A | 2007-06-28 A | 4 |  |
| 6 | Buchhandlung | 1d | 2007-06-29 A | 2007-06-29 A | 5 |  |
| 7 | Entwicklung Strategie | 5d | 2007-06-25 A | 2007-06-29 A |  |  |
| 10 | Review 1 | 0d | 2007-08-21 | 2007-08-21 |  | start no earlier than 2007-08-21 |
| 16 | Review 3 | 0d | 2007-09-07 | 2007-09-07 | 15 |  |
| 21 | Review 2 | 0d | 2007-09-21 | 2007-09-21 | 20 |  |
| 24 | **Vervielfältigung** | 5d | 2007-10-08 | 2007-10-12 | 17 |  |
| 25 | Exemplare binden lassen | 5d | 2007-10-08 | 2007-10-12 |  |  |
| 26 | CD-ROMs erstellen | 1d | 2007-10-08 | 2007-10-08 |  |  |

Changed:

| ID | Task | Start | Finish | Duration | Complete | Total float | Predecessors | Other |
| --- | --- | --- | --- | --- | --- | --- | --- | --- |
| 1 | **Masterstudy** | 2007-06-25 A | 2007-10-05 → 2007-10-12 (+7d) | 75d → 80d | 0% → 47% |  |  |  |
| 2 | **Vorarbeiten** | 2007-06-25 A | 2007-07-27 → 2007-08-21 (+25d) | 25d → 42d | 0% → 72% | 0d → 23d |  |  |
| 3 | **Literatursuche** | 2007-06-25 A | 2007-06-29 A |  | 0% → 100% | 0d → none |  | was named Organisieren der Literatur |
| 8 | Literaturstudium | 2007-07-02 A | 2007-07-13 → 2007-08-10 (+28d) | 10d → 30d | 0% → 90% | 0d → 30d |  | constraint as late as possible → start no earlier than 2007-07-26 |
| 9 | Erarbeiten Fragenkatalog | 2007-07-16 → 2007-08-06 A (+21d) | 2007-07-27 → 2007-08-17 (+21d) |  | 0% → 20% | 0d → 23d | 8 → 7 | constraint as late as possible → none |
| 11 | Setup Survey Applikation | 2007-07-16 → 2007-08-20 (+35d) | 2007-07-17 → 2007-08-21 (+35d) |  |  | 8d → 23d | 8 → 9 |  |
| 12 | Erarbeiten der Einladungsschreiben | 2007-07-11 → 2007-08-20 (+40d) | 2007-07-12 → 2007-08-21 (+40d) |  |  | 6d → 23d | none → 9 |  |
| 13 | **Datenerhebung** | 2007-07-30 → 2007-08-23 (+24d) | 2007-08-31 → 2007-09-07 (+7d) | 25d → 12d |  | 0d → 24d |  | was named Umfrage |
| 14 | Start der Umfrage | 2007-07-30 → 2007-08-23 (+24d) | 2007-08-24 → 2007-09-05 (+12d) | 20d → 10d |  | 0d → 24d |  | constraint none → start no earlier than 2007-08-23 |
| 15 | Auswertung der Umfrage | 2007-08-27 → 2007-09-06 (+10d) | 2007-08-31 → 2007-09-07 (+7d) | 5d → 2d |  | 0d → 24d |  |  |
| 17 | **Umsetzung** | 2007-09-03 → 2007-08-23 A (-11d) |  | 25d → 32d | 0% → 32% |  | 13 → 2 |  |
| 18 | Kapitel 1 - Einleitung | 2007-09-03 → 2007-08-23 A (-11d) | 2007-09-07 → 2007-08-31 (-7d) | 5d → 7d | 0% → 90% | 0d → 1.6d |  | was named Kapitel 1 |
| 19 | Kapitel 2 - Theorie / Literaturreview | 2007-09-10 → 2007-09-03 A (-7d) |  | 5d → 10d | 0% → 40% |  |  | was named Kapitel 2 |
| 20 | Kapitel 3 - Methodologie |  |  |  |  |  |  | was named Kapitel 3 |
| 22 | Kapitel 4 - Ergebnisse / Resultate |  | 2007-09-28 → 2007-10-01 (+3d) | 5d → 6d |  |  | 20 → 21 | was named Kapitel 4 |
| 23 | Kapitel 5 - Diskussion | 2007-10-01 → 2007-10-02 (+1d) |  | 5d → 4d |  |  |  | was named Kapitel 5 |

## Version 4 (saved 2007-08-30)

Last finish stays 2007-10-12. Complete tasks 4 → 8.

Removed: 16 Review 3

Changed:

| ID | Task | Start | Finish | Complete | Total float |
| --- | --- | --- | --- | --- | --- |
| 1 | **Masterstudy** |  |  | 47% → 66% |  |
| 2 | **Vorarbeiten** |  |  | 72% → 99% | 23d → 16.3d |
| 8 | Literaturstudium |  | 2007-08-10 A | 90% → 100% | 30d → none |
| 9 | Erarbeiten Fragenkatalog |  | 2007-08-17 A | 20% → 100% | 23d → none |
| 10 | Review 1 | 2007-08-21 A | 2007-08-21 A | 0% → 100% | 24d → none |
| 11 | Setup Survey Applikation | 2007-08-20 A | 2007-08-21 A | 0% → 100% | 23d → none |
| 12 | Erarbeiten der Einladungsschreiben | 2007-08-20 A |  | 0% → 80% | 23d → 16.3d |
| 16 | **Umsetzung** |  |  | 32% → 48% |  |
| 18 | Kapitel 2 - Theorie / Literaturreview |  |  | 40% → 90% | 0d → 0.05d |
| 19 | Kapitel 3 - Methodologie | 2007-09-17 A |  | 0% → 1% |  |

## Version 5 (saved 2007-09-29)

Last finish stays 2007-10-12. Complete tasks 8 → 13.

Changed:

| ID | Task | Start | Finish | Complete | Total float | Other |
| --- | --- | --- | --- | --- | --- | --- |
| 1 | **Masterstudy** |  |  | 66% → 84% |  |  |
| 2 | **Vorarbeiten** |  | 2007-08-21 A | 99% → 100% | 16.3d → none |  |
| 12 | Erarbeiten der Einladungsschreiben |  | 2007-08-21 A | 80% → 100% | 16.3d → none |  |
| 13 | **Datenerhebung** | 2007-08-23 A | 2007-09-07 A | 0% → 100% | 25d → none |  |
| 14 | Start der Umfrage | 2007-08-23 A | 2007-09-05 A | 0% → 100% | 25d → none |  |
| 15 | Auswertung der Umfrage | 2007-09-06 A | 2007-09-07 A | 0% → 100% | 25d → none |  |
| 16 | **Umsetzung** |  |  | 48% → 68% |  |  |
| 17 | Kapitel 1 - Einleitung |  | 2007-08-31 A | 90% → 100% | 9.05d → none |  |
| 18 | Kapitel 2 - Theorie / Literaturreview |  | 2007-09-14 A | 90% → 100% | 0.05d → none |  |
| 19 | Kapitel 3 - Methodologie |  |  | 1% → 95% |  |  |
| 22 | Kapitel 5 - Diskussion / Management Summary |  |  |  |  | was named Kapitel 5 - Diskussion |

## Version 6 (saved 2007-10-09)

Last finish stays 2007-10-12. Complete tasks 13 → 17.

Changed:

| ID | Task | Start | Finish | Complete | Total float |
| --- | --- | --- | --- | --- | --- |
| 1 | **Masterstudy** |  |  | 84% → 96% |  |
| 16 | **Umsetzung** |  | 2007-10-05 A | 68% → 100% | 0d → none |
| 19 | Kapitel 3 - Methodologie |  | 2007-09-21 A | 95% → 100% | 0d → none |
| 20 | Review 2 | 2007-09-21 A | 2007-09-21 A | 0% → 100% | 0d → none |
| 21 | Kapitel 4 - Ergebnisse / Resultate | 2007-09-24 A | 2007-10-01 A | 0% → 100% | 0d → none |
| 22 | Kapitel 5 - Diskussion / Management Summary | 2007-10-02 A | 2007-10-05 A | 0% → 100% | 0d → none |
| 23 | **Vervielfältigung** | 2007-10-08 A |  | 0% → 25% |  |
| 24 | Exemplare binden lassen | 2007-10-08 A |  | 0% → 20% |  |
| 25 | CD-ROMs erstellen | 2007-10-08 A |  | 0% → 50% |  |
